# Menta 0.3 research

Schedule from GanttProject, 2012-01-16 to 2012-02-06.
Research project to automate the incident handling.

## Calendars

- Project calendar: Mon-Fri working; Sat-Sun off.

## Resources

| Resource | Group |
| --- | --- |
| Max | Architect |
| Alex | Team lead |
| Adel | Developer |
| Bulat | Developer |
| Renat | Developer |
| Artem | Developer |

## Schedule

| ID | WBS | Task | Duration | Start | Finish | Predecessors | Resources |
| --- | --- | --- | --- | --- | --- | --- | --- |
| 1 | 1 | **Analysis** | 15d | 2012-01-16 | 2012-02-03 |  |  |
| 2 | 1.1 | Incidents | 13d | 2012-01-16 | 2012-02-01 |  | Artem; Renat; Adel [50%]; Max [50%]; Bulat; Alex [50%] |
| 3 | 1.2 | Workbook articles | 15d | 2012-01-16 | 2012-02-03 |  | Adel; Max; Alex |
| 4 | 2 | **Model** | 1d | 2012-02-06 | 2012-02-06 | 1 |  |
| 5 | 2.1 | Inbound textual description | 1d | 2012-02-06 | 2012-02-06 |  | Max |
| 6 | 2.2 | Internal knowledge(atom) representations | 1d | 2012-02-06 | 2012-02-06 |  |  |
| 7 | 2.3 | Formalization outbound structures | 1d | 2012-02-06 | 2012-02-06 |  |  |
